# Cronograma Versão4.0

Schedule from MS Project, 2016-05-02 to 2016-06-14, costs in R$, A marks actual dates.

## Calendars

- Padrão: Mon-Fri 09:00-12:00, 13:00-18:00; Sat-Sun off.

## Resources

| Resource | Rate |
| --- | --- |
| Jonas | 80 |
| Ligia | 80 |
| Cliente |  |
| Kelly | 80 |
| GP Externo | 250 |
| Felipe Alves | 80 |

## Schedule

| ID | WBS | Task | Type | Duration | Start | Finish | Predecessors | Complete | Remaining | Total slack | Resources | Work | Actual work | Cost | Actual cost |
| --- | --- | --- | --- | --- | --- | --- | --- | --- | --- | --- | --- | --- | --- | --- | --- |
| 1 | 1 | **Projeto SIES - Sistema Integrado de Estacionamentos** |  | 31.19d | 2016-05-02 13:00 A | 2016-06-14 14:30 |  | 61% | 12.1d | 0d |  | 303h | 108h | 24,410 | 8,810 |
| 2 | 1.1 | **Prospecção** |  | 1.38d | 2016-05-02 13:00 A | 2016-05-03 16:00 A |  | 100% |  |  |  | 13h | 13h | 1,210 | 1,210 |
| 3 | 1.1.1 | **PTEC** |  | 1d | 2016-05-02 13:00 A | 2016-05-03 13:00 A |  | 100% |  |  |  | 8h | 8h | 640 | 640 |
| 4 | 1.1.1.1 | Estudar Dominio da Aplicação |  | 1h | 2016-05-02 13:00 A | 2016-05-02 14:00 A |  | 100% |  |  | Jonas | 1h | 1h | 80 | 80 |
| 5 | 1.1.1.2 | Reunir-se com Fornecedor de Requisitos |  | 1h | 2016-05-02 14:00 A | 2016-05-02 15:00 A | 4 | 100% |  |  | Jonas | 1h | 1h | 80 | 80 |
| 6 | 1.1.1.3 | Redigir PTEC |  | 5h | 2016-05-02 15:00 A | 2016-05-03 11:00 A | 5 | 100% |  |  | Jonas | 5h | 5h | 400 | 400 |
| 7 | 1.1.1.4 | Revisar PTEC |  | 1h | 2016-05-03 11:00 A | 2016-05-03 12:00 A | 6 | 100% |  |  | Ligia | 1h | 1h | 80 | 80 |
| 8 | 1.1.1.5 | Aprovar PTEC | milestone | 0h | 2016-05-03 13:00 A | 2016-05-03 13:00 A | 7 | 100% |  |  | Cliente |  |  |  |  |
| 9 | 1.1.2 | **Est. Prel. De Tamanho** |  | 0.38d | 2016-05-03 13:00 A | 2016-05-03 16:00 A |  | 100% |  |  |  | 3h | 3h | 410 | 410 |
| 10 | 1.1.2.1 | Redigir Termo de Abertura do Projeto |  | 1h | 2016-05-03 13:00 A | 2016-05-03 14:00 A | 8 | 100% |  |  | Kelly | 1h | 1h | 80 | 80 |
| 11 | 1.1.2.2 | Estimar do tamanho do Projeto |  | 1h | 2016-05-03 14:00 A | 2016-05-03 15:00 A | 10 | 100% |  |  | Jonas | 1h | 1h | 80 | 80 |
| 12 | 1.1.2.3 | Revisar Estimativa do Tamanho do Projeto |  | 1h | 2016-05-03 15:00 A | 2016-05-03 16:00 A | 11 | 100% |  |  | GP Externo | 1h | 1h | 250 | 250 |
| 13 | 1.1.3 | **Est. Prel. De Cronograma e Orçamento** |  | 0.25d | 2016-05-03 13:00 A | 2016-05-03 15:00 A |  | 100% |  |  |  | 2h | 2h | 160 | 160 |
| 14 | 1.1.3.1 | Elaborar Cronograma de Orçamento Preliminar |  | 1h | 2016-05-03 13:00 A | 2016-05-03 14:00 A | 7 | 100% |  |  | Felipe Alves | 1h | 1h | 80 | 80 |
| 15 | 1.1.3.2 | Revisar Cronograma de Orçamento Preliminar |  | 1h | 2016-05-03 14:00 A | 2016-05-03 15:00 A | 14 | 100% |  |  | Ligia | 1h | 1h | 80 | 80 |
| 16 | 1.2 | **Analise** |  | 4.5d | 2016-05-03 16:00 A | 2016-05-10 11:00 A | 2 | 100% |  |  |  | 52h | 52h | 4,160 | 4,160 |
| 17 | 1.2.1 | Redigir Documentos de Requisito |  | 14h | 2016-05-03 16:00 A | 2016-05-05 14:00 A |  | 100% |  |  | Jonas | 20h | 20h | 1,600 | 1,600 |
| 18 | 1.2.2 | Redigir Matriz de Rastreabilidade Bidirecional |  | 16h | 2016-05-06 11:00 A | 2016-05-10 11:00 A | 17 | 100% |  |  | Felipe Alves | 16h | 16h | 1,280 | 1,280 |
| 19 | 1.2.3 | Redigir Cronograma e Orçamento Definitivo |  | 16h | 2016-05-06 11:00 A | 2016-05-10 11:00 A | 17 | 100% |  |  | Ligia | 16h | 16h | 1,280 | 1,280 |
| 20 | 1.3 | **Desenvolvimento** |  | 25.31d | 2016-05-10 11:00 A | 2016-06-14 14:30 | 16 | 27% | 18.52d | 0d |  | 238h | 43h | 19,040 | 3,440 |
| 21 | 1.3.1 | Implementar Crudes RF Manter Usuário |  | 11.5h | 2016-05-10 11:00 A | 2016-05-13 10:30 A |  | 100% |  |  | Kelly; Felipe Alves; Jonas; Ligia | 23h | 23h | 1,840 | 1,840 |
| 22 | 1.3.2 | Implementar Crudes RF Manter Convênio |  | 6.36h | 2016-05-13 10:30 A | 2016-05-19 10:51 A | 21 | 100% |  |  | Ligia; Jonas; Kelly; Felipe Alves | 20h | 20h | 1,600 | 1,600 |
| 23 | 1.3.3 | Implementar Crudes RF Manter Vagas |  | 5h | 2016-05-16 09:00 | 2016-05-17 10:00 | 21 |  |  | 20.44d | Jonas; Felipe Alves; Kelly; Ligia | 20h |  | 1,600 |  |
| 24 | 1.3.4 | Implementar Crudes RF Manter Cliente |  | 6.25h | 2016-05-19 10:51 | 2016-05-23 09:06 | 21, 22 |  |  | 0d | Kelly; Ligia; Felipe Alves; Jonas | 25h |  | 2,000 |  |
| 25 | 1.3.5 | Implementar Crudes RF Manter Credito Cliente |  | 7.5h | 2016-05-27 09:00 | 2016-05-30 14:30 | 21, 24 |  |  | 0d | Ligia; Kelly; Felipe Alves; Jonas | 30h |  | 2,400 |  |
| 26 | 1.3.6 | Implementar Crudes RF Controlar Aluguel de Vagas |  | 7.5h | 2016-05-30 14:30 | 2016-06-01 14:00 | 21, 24, 25 |  |  | 0d | Felipe Alves; Kelly; Jonas; Ligia | 30h |  | 2,400 |  |
| 27 | 1.3.7 | Implementar Crudes RF Gerar Relátorio Financeiro |  | 7.5h | 2016-06-01 14:00 | 2016-06-03 13:30 | 21, 22, 26 |  |  | 7.12d | Jonas; Kelly; Felipe Alves; Ligia | 30h |  | 2,400 |  |
| 28 | 1.3.8 | Implementar Crudes RF Manter Histórico do Cliente |  | 7.5h | 2016-05-23 09:06 | 2016-05-24 14:36 | 21, 24 |  |  | 14.99d | Felipe Alves; Jonas; Kelly; Ligia | 30h |  | 2,400 |  |
| 29 | 1.3.9 | Implementar Crudes RF Manter Fluxo de Caixa |  | 7.5h | 2016-06-13 09:00 | 2016-06-14 14:30 | 26, 21 |  |  | 0d | Kelly; Ligia; Felipe Alves; Jonas | 30h |  | 2,400 |  |
